# SAD_G6_1.0.1

How a schedule from MS Project changed from version to version. A marks actual dates.

## Version 1 (saved 2018-03-15, file wbs_v1.mpp)

Note of the change: critical path ha dar axha and. cost ha dar file e exel va wbs dar file e mpp ast

| ID | WBS | Task | Duration | Start | Finish | Predecessors | Complete | Total float | Constraint |
| --- | --- | --- | --- | --- | --- | --- | --- | --- | --- |
| 1 | 1 | **پروژه** | 59.19d | 2018-02-22 A | 2018-07-24 |  | 5% | -0.05d |  |
| 2 | 1.1 | **فاز اوّل(تهیهٔ پروپوزال)** | 5.07d | 2018-02-22 A | 2018-03-05 |  | 99% |  |  |
| 3 | 1.1.1 | **نوشتن بخش‌ها** | 4.07d | 2018-02-22 A | 2018-03-14 |  | 98% | 0d |  |
| 4 |  | اهداف و توجیه | 0.5h | 2018-03-05 A | 2018-03-05 A |  | 100% |  |  |
| 5 |  | معرفی و مفاد قرارداد | 4h | 2018-03-05 A | 2018-03-05 A |  | 100% |  |  |
| 6 | 1.1.3 | **معرفی سیستم و توضیح تکنولوژی** | 0.29d | 2018-03-05 A | 2018-03-07 A |  | 100% |  |  |
| 7 |  | تهیه گزینه راه حل‌های تکنولوژی | 10h | 2018-03-05 A | 2018-03-06 A |  | 100% |  |  |
| 8 |  | امکان سنجی گزینه ها | 5h | 2018-03-06 A | 2018-03-07 A | 7 | 100% |  |  |
| 9 |  | انتخاب گزینه راه حل نهایی | 0.25h | 2018-03-07 A | 2018-03-07 A | 8 | 100% |  |  |
| 10 | 1.1.4 | **پوشش نیازمندی‌های کارکردی و غیرکارکردی** | 1.14d | 2018-02-22 A | 2018-02-28 |  | 88% | 0.29d |  |
| 11 |  | نیازمندی‌های کارکردی | 2h | 2018-02-22 A | 2018-02-28 |  | 75% | 0.29d |  |
| 12 |  | نیازمندی‌های غیرکارکردی | 2h | 2018-02-27 A | 2018-02-28 A |  | 100% |  |  |
| 13 |  | برآورد زمانی | 0.14d | 2018-02-22 A | 2018-02-25 A |  | 100% |  |  |
| 14 |  | برآوردمالی | 0.29d | 2018-03-04 A | 2018-03-06 A | 13 | 100% |  |  |
| 15 |  | مراحل اجرای پروژه | 0.15d | 2018-03-09 A | 2018-03-12 A | 14 | 100% |  |  |
| 16 |  | معرفی اعضای گروه | 0.25h | 2018-03-09 A | 2018-03-14 A |  | 100% |  |  |
| 17 |  | بیان نمرات اضافی | 0.5h | 2018-03-09 A | 2018-03-14 A |  | 100% |  |  |
| 18 |  | بازخوانی و تصحیح پروپوزال و آماده سازی نسخه نهایی | 5h | 2018-03-04 A | 2018-03-06 A |  | 100% |  |  |
| 19 |  | ارسال نسخه نهایی | 0d | 2018-03-06 A | 2018-03-06 | 18 | 99% | -0.14d |  |
| 20 | 1.2 | **فاز دوم(ساختار شکست کار)** | 5.64d | 2018-03-05 A | 2018-03-15 | 2 |  |  |  |
| 21 | 1.2.1 | **یادگیری** | 4.21d | 2018-03-05 A | 2018-03-10 |  |  |  |  |
| 22 |  | یادگیری گیت | 3h | 2018-03-05 A | 2018-03-07 |  |  | 36.82d |  |
| 23 |  | یادگیری کار با project libre | 4h | 2018-03-07 | 2018-03-07 |  |  | 28.9d | start no earlier than 2018-03-07 |
| 24 | 1.2.2 | **اجرا** | 10.29d | 2018-03-14 | 2018-03-19 |  |  | 25.14d |  |
| 25 |  | ساخت ریپازیتوری گیت | 0.25h | 2018-03-14 | 2018-03-14 | 22 |  | 35.39d | start no earlier than 2018-03-10 |
| 26 | 1.2.2.2 | **ساخت wbs** | 10.29d | 2018-03-14 | 2018-03-19 |  |  | 25.14d |  |
| 27 | 1.2.2.2.1 | **مشخص کردن کارها و وظایف** | 6.81d | 2018-03-14 | 2018-03-17 |  |  | 26.76d |  |
| 28 |  | نوشتن کارها و وظایف | 12h | 2018-03-14 | 2018-03-15 | 23 |  | 28.76d |  |
| 29 |  | ریویو | 1.33h | 2018-03-16 | 2018-03-17 | 28 |  | 26.76d |  |
| 30 |  | تمیزکاری و زیبا کردن | 2h | 2018-03-19 | 2018-03-19 | 29 |  | 24.29d |  |
| 31 |  | اضافه کردن تقویم شمسی | 4h | 2018-03-19 | 2018-03-19 | 30 |  | 25.14d |  |
| 32 | 1.3 | **فاز سوم و چهارم** | 30.29d | 2018-03-16 | 2018-04-16 | 20 |  | 16.57d |  |
| 33 | 1.3.1 | **یادگیری** | 17.71d | 2018-03-16 | 2018-03-24 |  |  | 29.14d |  |
| 34 |  | یادآوری درست نوشتن و کشیدن یوزکیس | 24h | 2018-03-19 | 2018-03-22 |  |  | 31.5d | start no earlier than 2018-03-19 |
| 35 |  | یادگرفتن کار با ابزار وایرفریم درست کردن | 16h | 2018-03-17 | 2018-03-24 |  |  | 25.71d |  |
| 36 |  | یاد گرفتن سلنیوم | 16h | 2018-03-16 | 2018-03-19 |  |  | 39.14d |  |
| 37 | 1.3.2 | **اجرا** | 30.29d | 2018-03-16 | 2018-04-16 |  |  | 16.57d |  |
| 38 |  | دقیق‌تر کردن نیازمندی‌های پروپوزال | 2h | 2018-03-16 | 2018-03-16 |  |  | 44.14d |  |
| 39 |  | نوشتن یوزکیس‌ها | 60h | 2018-03-26 | 2018-04-04 | 38, 34 |  | 19.57d | start no earlier than 2018-03-24 |
| 40 |  | درست کردن داک نیازمندی‌ها و یوزکیس‌ها | 4h | 2018-03-28 | 2018-03-30 | 39SS |  | 20d | start no earlier than 2018-03-28 |
| 41 |  | نوشتن سناریوهای تست | 24h | 2018-03-26 | 2018-03-29 | 39SS+0.57d |  | 20.43d |  |
| 42 | 1.3.2.5 | **پیاده‌سازی وایرفریم** | 3.14d | 2018-04-03 | 2018-04-16 |  |  | 16.29d |  |
| 43 |  | طراحی | 30h | 2018-04-03 | 2018-04-06 | 35 |  | 16.86d | start no earlier than 2018-04-03 |
| 44 |  | پیاده‌سازی | 20h | 2018-04-03 | 2018-04-16 | 43SS |  | 16.29d | start no earlier than 2018-02-22 |
| 45 | 1.4 | **فاز پنجم(پیاده‌سازی و تست)** | 52.33d | 2018-03-16 | 2018-07-24 | 20 |  | -0.05d |  |
| 46 | 1.4.1 | **یادگیری** | 35.5d | 2018-03-16 | 2018-05-09 |  |  | 8.36d |  |
| 47 |  | یادگیری جنگو | 64.5h | 2018-04-18 | 2018-05-09 |  |  | 4.86d | start no earlier than 2018-04-18 |
| 48 |  | یادآوری postgres | 2h | 2018-03-16 | 2018-03-16 |  |  | 43.57d |  |
| 49 | 1.4.2 | **اجرا** | 16.5d | 2018-05-15 | 2018-07-13 |  |  |  |  |
| 50 | 1.4.2.1 | **اجرای سمت سرور** | 6.14d | 2018-05-15 | 2018-06-11 |  |  | 1.57d |  |
| 51 | 1.4.2.1.1 | **طراحی ER** | 0.71d | 2018-05-15 | 2018-05-16 | 47SS+4.57d |  | 1.57d |  |
| 52 |  | طراحی اوّلیه | 14h | 2018-05-15 | 2018-05-16 |  |  | 3.29d |  |
| 53 |  | بازبینی | 1h | 2018-05-16 | 2018-05-16 | 52 |  | 8.71d |  |
| 54 | 1.4.2.1.2 | **پیاده‌سازی پایگاه داده** | 0.57d | 2018-05-19 | 2018-05-23 | 53, 48 |  | 6.29d |  |
| 55 |  | پیاده‌سازی اوّلیه | 5h | 2018-05-19 | 2018-05-23 |  |  | 8.14d |  |
| 56 |  | نرمال‌سازی روابط | 1h | 2018-05-23 | 2018-05-23 | 55 |  | 8.14d |  |
| 57 |  | پیاده‌سازی کد پایتون | 140h | 2018-05-16 | 2018-06-11 | 52 |  | 4.14d |  |
| 58 | 1.4.2.2 | **اجرای سمت کاربر** | 6.95d | 2018-06-12 | 2018-07-04 |  |  |  |  |
| 59 |  | طراحی ui | 40h | 2018-06-12 | 2018-06-19 |  |  | 0d | as late as possible |
| 60 |  | یادگیری بستر مناسب پیاده‌سازی ui | 15h | 2018-06-15 | 2018-06-19 |  |  | 0d | as late as possible |
| 61 |  | پیاده‌سازی ui | 42h | 2018-06-19 | 2018-07-04 | 60, 59 |  | -3.19d | as late as possible |
| 62 |  | دیپلوی آزمایشی | 14h | 2018-07-12 | 2018-07-13 |  |  | 19.43d | start no earlier than 2018-07-12 |
| 63 | 1.4.3 | **تست کار دیپلوی‌شده** | 2.05d | 2018-07-14 | 2018-07-24 | 49 |  | -5.71d |  |
| 64 |  | تست | 26.67h | 2018-07-14 | 2018-07-24 |  |  | -5.76d | start no earlier than 2018-07-12 |
| 65 |  | رفع اشکال | 32h | 2018-07-16 | 2018-07-19 | 64SS |  | -4.71d |  |

## Version 2 (saved 2018-03-16, file final.mpp)

Note of the change: final critical path, wbs and costs able added

Last finish 2018-07-24 → 2018-06-28 (-26d). Complete tasks 12 → 22.

Added:

| ID | Task | Duration | Start | Finish | Predecessors | Resources |
| --- | --- | --- | --- | --- | --- | --- |
| 32 | فرستادن WBS | 0h | 2018-03-14 A | 2018-03-14 A | 26 |  |
| 62 | شروع پیاده‌سازی ui | 25h | 2018-05-30 | 2018-06-13 | 60, 61 | درنا |

Changed:

| ID | Task | Start | Finish | Duration | Complete | Total float | Predecessors | Other |
| --- | --- | --- | --- | --- | --- | --- | --- | --- |
| 1 | **پروژه** | 2018-02-22 A → 2018-02-20 A (-2d) | 2018-07-24 → 2018-06-28 (-26d) | 59.19d → 33.59d | 5% → 16% | -0.05d → 0d |  | baseline start none → 2018-02-20; baseline finish none → 2018-02-26 |
| 2 | **فاز اوّل(تهیهٔ پروپوزال)** | 2018-02-22 A → 2018-02-20 A (-2d) | 2018-03-05 → 2018-03-02 A (-3d) | 5.07d → 3d | 99% → 100% |  |  | baseline start none → 2018-02-20; baseline finish none → 2018-02-28 |
| 3 | **نوشتن بخش‌ها** | 2018-02-22 A → 2018-02-20 A (-2d) | 2018-03-14 → 2018-03-01 A (-13d) | 4.07d → 2.31d | 98% → 100% | 0d → none |  | baseline start none → 2018-02-20; baseline finish none → 2018-02-28 |
| 4 | اهداف و توجیه | 2018-03-05 A → 2018-02-28 A (-5d) | 2018-03-05 A → 2018-02-28 A (-5d) |  |  |  |  | baseline start none → 2018-02-20; baseline finish none → 2018-02-20 |
| 5 | معرفی و مفاد قرارداد | 2018-03-05 A → 2018-02-27 A (-6d) | 2018-03-05 A → 2018-02-28 A (-5d) |  |  |  |  | baseline start none → 2018-02-27; baseline finish none → 2018-02-28 |
| 6 | **معرفی سیستم و توضیح تکنولوژی** | 2018-03-05 A → 2018-02-20 A (-13d) | 2018-03-07 A → 2018-02-24 A (-11d) | 0.29d → 1.5d |  |  |  | baseline start none → 2018-02-20; baseline finish none → 2018-02-26 |
| 7 | تهیه گزینه راه حل‌های تکنولوژی | 2018-03-05 A → 2018-02-20 A (-13d) | 2018-03-06 A → 2018-02-21 A (-13d) | 10h → 4h |  |  |  | baseline start none → 2018-02-20; baseline finish none → 2018-02-21 |
| 8 | امکان سنجی گزینه ها | 2018-03-06 A → 2018-02-21 A (-13d) | 2018-03-07 A → 2018-02-22 A (-13d) | 5h → 2h |  |  |  | baseline start none → 2018-02-21; baseline finish none → 2018-02-22 |
| 9 | انتخاب گزینه راه حل نهایی | 2018-03-07 A → 2018-02-22 A (-13d) | 2018-03-07 A → 2018-02-24 A (-11d) | 0.25h → 2h |  |  |  | baseline start none → 2018-02-23; baseline finish none → 2018-02-26 |
| 10 | **پوشش نیازمندی‌های کارکردی و غیرکارکردی** | 2018-02-22 A → 2018-02-27 A (+5d) | 2018-02-28 → 2018-03-01 A (+1d) | 1.14d → 0.69d | 88% → 100% | 0.29d → none |  | baseline start none → 2018-02-20; baseline finish none → 2018-02-28 |
| 11 | نیازمندی‌های کارکردی | 2018-02-22 A → 2018-02-28 A (+6d) | 2018-02-28 → 2018-03-01 A (+1d) |  | 75% → 100% | 0.29d → none | none → 5 | baseline start none → 2018-02-27; baseline finish none → 2018-02-28 |
| 12 | نیازمندی‌های غیرکارکردی |  |  |  |  |  |  | resources درنا → معین; baseline start none → 2018-02-20; baseline finish none → 2018-02-21 |
| 13 | برآورد زمانی | 2018-02-22 A → 2018-02-20 A (-2d) | 2018-02-25 A → 2018-02-21 A (-4d) | 0.14d → 4h |  |  |  | baseline start none → 2018-02-20; baseline finish none → 2018-02-21 |
| 14 | برآوردمالی | 2018-03-04 A → 2018-02-21 A (-11d) | 2018-03-06 A → 2018-02-26 A (-8d) | 0.29d → 5h |  |  |  | baseline start none → 2018-02-21; baseline finish none → 2018-02-28 |
| 15 | مراحل اجرای پروژه | 2018-03-09 A → 2018-02-27 A (-10d) | 2018-03-12 A → 2018-02-28 A (-12d) | 0.15d → 2h |  |  |  | baseline start none → 2018-02-20; baseline finish none → 2018-02-21 |
| 16 | معرفی اعضای گروه | 2018-03-09 A → 2018-02-20 A (-17d) | 2018-03-14 A → 2018-02-24 A (-18d) | 0.25h → 1d |  |  |  | baseline start none → 2018-02-20; baseline finish none → 2018-02-26 |
| 17 | بیان نمرات اضافی | 2018-03-09 A → 2018-02-28 A (-9d) | 2018-03-14 A → 2018-02-28 A (-14d) | 0.5h → 2h |  |  |  | baseline start none → 2018-02-20; baseline finish none → 2018-02-21 |
| 18 | بازخوانی و تصحیح پروپوزال و آماده سازی نسخه نهایی | 2018-03-04 A → 2018-03-01 A (-3d) | 2018-03-06 A → 2018-03-02 A (-4d) | 5h → 1h |  |  | none → 3 | resources پگاه → پگاه; درنا; معین; baseline start none → 2018-02-28; baseline finish none → 2018-02-28 |
| 19 | ارسال نسخه نهایی | 2018-03-06 A → 2018-03-02 A (-4d) | 2018-03-06 → 2018-03-02 A (-4d) | 0d → 0h | 99% → 100% | -0.14d → none |  | baseline start none → 2018-02-28; baseline finish none → 2018-02-28 |
| 20 | **فاز دوم(ساختار شکست کار)** | 2018-03-05 A → 2018-03-02 A (-3d) | 2018-03-15 → 2018-03-20 (+5d) | 5.64d → 3.66d | 0% → 100% |  | 2 → 19 | baseline start none → 2018-02-28; baseline finish none → 2018-03-21 |
| 21 | **یادگیری** | 2018-03-05 A → 2018-03-02 A (-3d) | 2018-03-10 → 2018-03-07 A (-3d) | 4.21d → 0.62d | 0% → 100% |  |  | baseline start none → 2018-02-28; baseline finish none → 2018-03-08 |
| 22 | یادگیری گیت | 2018-03-05 A → 2018-03-02 A (-3d) | 2018-03-07 A |  | 0% → 100% | 36.82d → none |  | resources درنا; معین; پگاه → درنا; baseline start none → 2018-02-28; baseline finish none → 2018-03-05 |
| 23 | یادگیری کار با project libre | 2018-03-07 → 2018-03-02 A (-5d) | 2018-03-07 A | 4h → 5h | 0% → 100% | 28.9d → none |  | constraint start no earlier than 2018-03-07 → none; resources پگاه → معین [88.9%]; پگاه [88.9%]; baseline start none → 2018-02-28; baseline finish none → 2018-03-08 |
| 24 | **اجرا** | 2018-03-14 → 2018-03-12 (-2d) | 2018-03-19 → 2018-03-20 (+1d) | 10.29d → 10.25h | 0% → 100% | 25.14d → none |  | baseline start none → 2018-03-12; baseline finish none → 2018-03-21 |
| 25 | ساخت ریپازیتوری گیت | 2018-03-14 → 2018-03-13 A (-1d) | 2018-03-14 → 2018-03-13 A (-1d) |  | 0% → 100% | 35.39d → none | 22 → none | constraint start no earlier than 2018-03-10 → none; resources پگاه → درنا; baseline start none → 2018-03-13; baseline finish none → 2018-03-13 |
| 26 | **ساخت wbs** | 2018-03-14 → 2018-03-08 A (-6d) | 2018-03-19 → 2018-03-14 A (-5d) | 10.29d → 1.62d | 0% → 100% | 25.14d → none |  | baseline start none → 2018-03-12; baseline finish none → 2018-03-15 |
| 27 | **مشخص کردن کارها و وظایف** | 2018-03-14 → 2018-03-08 A (-6d) | 2018-03-17 → 2018-03-14 A (-3d) | 6.81d → 1.5d | 0% → 100% | 26.76d → none |  | baseline start none → 2018-03-12; baseline finish none → 2018-03-14 |
| 28 | نوشتن کارها و وظایف | 2018-03-14 → 2018-03-08 A (-6d) | 2018-03-15 → 2018-03-14 A (-1d) | 12h → 7h | 0% → 100% | 28.76d → none |  | constraint none → start no later than 2018-03-08; baseline start none → 2018-03-12; baseline finish none → 2018-03-14 |
| 29 | ریویو | 2018-03-16 → 2018-03-14 A (-2d) | 2018-03-17 → 2018-03-14 A (-3d) | 1.33h → 1h | 0% → 100% | 26.76d → none | 28 → 28, 31 | resources پگاه; درنا; معین → پگاه; baseline start none → 2018-03-14; baseline finish none → 2018-03-14 |
| 30 | تمیزکاری و زیبا کردن | 2018-03-19 → 2018-03-14 A (-5d) | 2018-03-19 → 2018-03-14 A (-5d) | 2h → 1h | 0% → 100% | 24.29d → none |  | baseline start none → 2018-03-14; baseline finish none → 2018-03-15 |
| 31 | اضافه کردن تقویم شمسی | 2018-03-19 → 2018-03-13 A (-6d) | 2018-03-19 → 2018-03-14 A (-5d) | 4h → 2h | 0% → 100% | 25.14d → none | 30 → none | baseline start none → 2018-03-13; baseline finish none → 2018-03-14 |
| 33 | **فاز سوم و چهارم** | 2018-03-16 → 2018-03-20 (+4d) | 2018-04-16 → 2018-04-25 (+9d) | 30.29d → 11.41d |  | 16.57d → -0.19d |  | baseline start none → 2018-02-20; baseline finish none → 2018-03-28 |
| 34 | **یادگیری** | 2018-03-16 → 2018-03-20 (+4d) |  | 17.71d → 2d |  | 29.14d → 3.81d |  | baseline start none → 2018-03-21; baseline finish none → 2018-03-25 |
| 35 | یادآوری درست نوشتن و کشیدن یوزکیس | 2018-03-19 → 2018-03-20 (+1d) | 2018-03-22 → 2018-03-21 (-1d) | 24h → 4h |  | 31.5d → 6.78d |  | constraint start no earlier than 2018-03-19 → none; resources پگاه → معین; baseline start none → 2018-03-21; baseline finish none → 2018-03-22 |
| 36 | یادگرفتن کار با ابزار وایرفریم درست کردن | 2018-03-17 → 2018-03-20 (+3d) |  |  |  | 25.71d → 3.81d |  | baseline start none → 2018-03-21; baseline finish none → 2018-03-25 |
| 37 | یاد گرفتن سلنیوم | 2018-03-16 → 2018-03-20 (+4d) | 2018-03-19 → 2018-03-21 (+2d) | 16h → 4h |  | 39.14d → 10.72d |  | resources معین → پگاه; baseline start none → 2018-03-21; baseline finish none → 2018-03-25 |
| 38 | **اجرا** | 2018-03-16 → 2018-03-20 (+4d) | 2018-04-16 → 2018-04-25 (+9d) | 30.29d → 11.41d |  | 16.57d → -0.19d |  | baseline start none → 2018-02-20; baseline finish none → 2018-02-28 |
| 39 | دقیق‌تر کردن نیازمندی‌های پروپوزال | 2018-03-16 → 2018-03-26 (+10d) | 2018-03-16 → 2018-03-27 (+11d) |  |  | 44.14d → 3.97d |  | resources پگاه → درنا; baseline start none → 2018-02-20; baseline finish none → 2018-02-21 |
| 40 | نوشتن یوزکیس‌ها | 2018-03-26 → 2018-03-27 (+1d) | 2018-04-04 → 2018-03-31 (-4d) | 60h → 17.4h |  | 19.57d → 3.97d |  | constraint start no earlier than 2018-03-24 → none; resources معین → معین; پگاه; baseline start none → 2018-02-20; baseline finish none → 2018-03-03 |
| 41 | درست کردن داک نیازمندی‌ها و یوزکیس‌ها | 2018-03-28 → 2018-04-22 (+25d) | 2018-03-30 → 2018-04-25 (+26d) | 4h → 2h |  | 20d → -0.19d | 40SS → 40 | constraint start no earlier than 2018-03-28 → start no earlier than 2018-04-22; resources درنا → پگاه [18.2%]; baseline start none → 2018-02-20; baseline finish none → 2018-02-21 |
| 42 | نوشتن سناریوهای تست | 2018-03-26 → 2018-03-27 (+1d) | 2018-03-29 → 2018-04-05 (+7d) | 24h → 30h |  | 20.43d → 3.97d | 40SS+0.57d → 40SS | resources پگاه → درنا; baseline start none → 2018-02-20; baseline finish none → 2018-03-07 |
| 43 | **پیاده‌سازی وایرفریم** | 2018-04-03 → 2018-03-20 (-14d) | 2018-04-16 → 2018-04-11 (-5d) | 3.14d → 8.66d |  | 16.29d → 2.56d |  | baseline start none → 2018-02-20; baseline finish none → 2018-03-28 |
| 44 | طراحی | 2018-04-03 → 2018-03-20 (-14d) | 2018-04-06 → 2018-03-26 (-11d) | 30h → 11.5h |  | 16.86d → 2.56d | 36 → none | constraint start no earlier than 2018-04-03 → none; resources پگاه → معین; درنا; baseline start none → 2018-02-20; baseline finish none → 2018-03-07 |
| 45 | پیاده‌سازی | 2018-04-03 → 2018-03-26 (-8d) | 2018-04-16 → 2018-04-11 (-5d) | 20h → 7.75h |  | 16.29d → 2.56d | 44SS → 44, 36 | constraint start no earlier than 2018-02-22 → none; resources درنا → پگاه; معین; baseline start none → 2018-02-27; baseline finish none → 2018-03-28 |
| 46 | **فاز پنجم(پیاده‌سازی و تست)** | 2018-03-16 → 2018-04-23 (+38d) | 2018-07-24 → 2018-06-28 (-26d) | 52.33d → 15.72d |  | -0.05d → 0d | 20 → 33 |  |
| 47 | **یادگیری** | 2018-03-16 → 2018-04-23 (+38d) | 2018-05-09 → 2018-05-03 (-6d) | 35.5d → 2.69d |  | 8.36d → 0d |  |  |
| 48 | یادگیری جنگو | 2018-04-18 → 2018-04-25 (+7d) | 2018-05-09 → 2018-05-03 (-6d) | 64.5h → 20h |  | 4.86d → 0d |  | constraint start no earlier than 2018-04-18 → none; resources درنا; پگاه → پگاه; درنا; معین |
| 49 | یادآوری postgres | 2018-03-16 → 2018-04-23 (+38d) | 2018-03-16 → 2018-04-23 (+38d) | 2h → 0.5h |  | 43.57d → -0.19d |  | constraint none → start no later than 2018-04-23; resources معین → درنا |
| 50 | **اجرا** | 2018-05-15 → 2018-04-25 (-20d) | 2018-07-13 → 2018-06-28 (-15d) | 16.5d → 15.53d |  | none → 0d |  |  |
| 51 | **اجرای سمت سرور** | 2018-05-15 → 2018-05-03 (-12d) | 2018-06-11 → 2018-06-07 (-4d) | 6.14d → 8.25d |  | 1.57d → 1.03d |  |  |
| 52 | **طراحی ER** | 2018-05-15 → 2018-05-03 (-12d) | 2018-05-16 → 2018-05-09 (-7d) | 0.71d → 1.12d |  | 1.57d → 1.03d | 48SS+4.57d → none |  |
| 53 | طراحی اوّلیه | 2018-05-15 → 2018-05-03 (-12d) | 2018-05-16 → 2018-05-09 (-7d) | 14h → 6h |  | 3.29d → 1.03d | none → 48 | resources درنا; معین → معین |
| 54 | بازبینی | 2018-05-16 → 2018-05-09 (-7d) | 2018-05-16 → 2018-05-09 (-7d) | 1h → 3h |  | 8.71d → 1.03d |  | resources پگاه → درنا |
| 55 | **پیاده‌سازی پایگاه داده** | 2018-05-19 → 2018-05-09 (-10d) | 2018-05-23 → 2018-05-11 (-12d) | 0.57d → 0.88d |  | 6.29d → 1.03d | 54, 49 → none |  |
| 56 | پیاده‌سازی اوّلیه | 2018-05-19 → 2018-05-09 (-10d) | 2018-05-23 → 2018-05-10 (-13d) |  |  | 8.14d → 1.03d | none → 54, 40 |  |
| 57 | نرمال‌سازی روابط | 2018-05-23 → 2018-05-10 (-13d) | 2018-05-23 → 2018-05-11 (-12d) | 1h → 2h |  | 8.14d → 1.03d |  |  |
| 58 | پیاده‌سازی کد پایتون | 2018-05-16 → 2018-05-11 (-5d) | 2018-06-11 → 2018-06-07 (-4d) | 140h → 50h |  | 4.14d → 1.03d | 53 → 48, 55 | resources معین → پگاه; معین |
| 59 | **اجرای سمت کاربر** | 2018-06-12 → 2018-04-25 (-48d) | 2018-07-04 → 2018-06-28 (-6d) | 6.95d → 15.53d |  | none → 0d |  |  |
| 60 | طراحی ui | 2018-06-12 → 2018-05-03 (-40d) | 2018-06-19 → 2018-05-30 (-20d) | 40h → 20h |  |  | none → 48 | constraint as late as possible → none; resources پگاه → درنا |
| 61 | یادگیری بستر مناسب پیاده‌سازی ui | 2018-06-15 → 2018-04-25 (-51d) | 2018-06-19 → 2018-05-09 (-41d) |  |  | 0d → 5.03d |  | constraint as late as possible → none; resources معین → پگاه |
| 63 | پیاده‌سازی ui | 2018-06-19 → 2018-06-13 (-6d) | 2018-07-04 → 2018-06-28 (-6d) | 42h → 30h |  | -3.19d → 0d | 61, 60 → 61SS+1d, 60, 58, 62 | constraint as late as possible → none; resources درنا; معین; پگاه → پگاه; درنا |
| 64 | دیپلوی آزمایشی | 2018-07-12 → 2018-06-13 (-29d) | 2018-07-13 → 2018-06-14 (-29d) | 14h → 6h |  | 19.43d → 0d | none → 63SS | constraint start no earlier than 2018-07-12 → none |
| 65 | **تست کار دیپلوی‌شده** | 2018-07-14 → 2018-06-14 (-30d) | 2018-07-24 → 2018-06-26 (-28d) | 2.05d → 2d |  | -5.71d → 0d | 50 → 64 |  |
| 66 | تست | 2018-07-14 → 2018-06-14 (-30d) | 2018-07-24 → 2018-06-20 (-34d) | 26.67h → 6h |  | -5.76d → 0d | none → 64 | constraint start no earlier than 2018-07-12 → none; resources درنا; پگاه → معین |
| 67 | رفع اشکال | 2018-07-16 → 2018-06-20 (-26d) | 2018-07-19 → 2018-06-26 (-23d) | 32h → 10h |  | -4.71d → 0d | 66SS → 66 |  |

## Version 3 (saved 2018-03-22, file final.mpp)

Note of the change: hafte ye akhare esfand

Last finish stays 2018-06-28. Complete tasks 22 → 24.

Changed:

| ID | Task | Start | Finish | Complete | Total float |
| --- | --- | --- | --- | --- | --- |
| 1 | **پروژه** |  |  | 16% → 20% |  |
| 33 | **فاز سوم و چهارم** | 2018-03-20 A |  | 0% → 10% |  |
| 34 | **یادگیری** | 2018-03-20 A |  | 0% → 32% | 3.81d → 9.22d |
| 35 | یادآوری درست نوشتن و کشیدن یوزکیس | 2018-03-20 A | 2018-03-21 A | 0% → 100% | 6.78d → none |
| 36 | یادگرفتن کار با ابزار وایرفریم درست کردن | 2018-03-20 A |  | 0% → 10% |  |
| 37 | یاد گرفتن سلنیوم | 2018-03-20 A |  | 0% → 50% |  |
| 38 | **اجرا** | 2018-03-20 A |  | 0% → 3% |  |
| 39 | دقیق‌تر کردن نیازمندی‌های پروپوزال | 2018-03-26 A | 2018-03-27 A | 0% → 100% | 3.97d → none |
| 46 | **فاز پنجم(پیاده‌سازی و تست)** | 2018-04-23 A |  | 0% → 2% |  |
| 47 | **یادگیری** | 2018-04-23 A |  | 0% → 15% |  |
| 48 | یادگیری جنگو | 2018-04-25 A |  | 0% → 15% |  |

## Version 4 (saved 2018-03-28, file final.mpp)

Note of the change: hafte ye avale farvadin

Last finish stays 2018-06-28.

Changed:

| ID | Task | Start | Finish | Duration | Complete | Total float |
| --- | --- | --- | --- | --- | --- | --- |
| 1 | **پروژه** |  |  |  | 20% → 25% |  |
| 33 | **فاز سوم و چهارم** |  |  |  | 10% → 23% |  |
| 38 | **اجرا** |  |  |  | 3% → 21% |  |
| 40 | نوشتن یوزکیس‌ها | 2018-03-27 A |  |  | 0% → 85% | 3.97d → 5.29d |
| 42 | نوشتن سناریوهای تست |  | 2018-04-05 → 2018-04-11 (+6d) | 30h → 40h |  | 3.97d → 2.72d |
| 46 | **فاز پنجم(پیاده‌سازی و تست)** |  |  |  | 2% → 4% |  |
| 47 | **یادگیری** |  |  |  | 15% → 39% |  |
| 48 | یادگیری جنگو |  |  |  | 15% → 40% |  |
| 50 | **اجرا** | 2018-04-25 A |  |  |  |  |
| 59 | **اجرای سمت کاربر** | 2018-04-25 A |  |  |  |  |
| 61 | یادگیری بستر مناسب پیاده‌سازی ui | 2018-04-25 A | 2018-05-09 → 2018-05-10 (+1d) | 15h → 20h | 0% → 2% | 5.03d → 4.41d |

## Version 5 (saved 2018-04-05, file final.mpp)

Note of the change: hafte dovome farvardin

Last finish stays 2018-06-28. Complete tasks 24 → 25.

Changed:

| ID | Task | Start | Finish | Duration | Complete | Total float | Other |
| --- | --- | --- | --- | --- | --- | --- | --- |
| 1 | **پروژه** |  |  |  | 25% → 34% |  |  |
| 33 | **فاز سوم و چهارم** |  |  | 11.41d → 11.78d | 23% → 48% | -0.19d → 0d |  |
| 34 | **یادگیری** |  |  |  | 32% → 93% | 9.22d → 9.41d |  |
| 36 | یادگرفتن کار با ابزار وایرفریم درست کردن |  | 2018-03-24 A |  | 10% → 100% | 3.81d → none |  |
| 37 | یاد گرفتن سلنیوم |  |  |  | 50% → 60% | 10.72d → 10.91d |  |
| 38 | **اجرا** |  |  | 11.41d → 11.78d | 21% → 36% | -0.19d → 0d |  |
| 41 | درست کردن داک نیازمندی‌ها و یوزکیس‌ها | 2018-04-22 A |  | 2h → 5h | 0% → 75% | -0.19d → -0.38d |  |
| 42 | نوشتن سناریوهای تست | 2018-03-27 → 2018-04-03 A (+7d) | 2018-04-11 → 2018-04-25 (+14d) |  | 0% → 1% | 2.72d → 0d | constraint none → start no earlier than 2018-04-03 |
| 43 | **پیاده‌سازی وایرفریم** | 2018-03-20 A |  |  | 0% → 46% | 2.56d → 2.75d |  |
| 44 | طراحی | 2018-03-20 A |  |  | 0% → 50% | 2.56d → 4.83d |  |
| 45 | پیاده‌سازی | 2018-03-26 A |  |  | 0% → 40% | 2.56d → 2.75d |  |
| 46 | **فاز پنجم(پیاده‌سازی و تست)** | 2018-04-23 A → 2018-04-25 A (+2d) |  | 15.72d → 15.53d | 4% → 7% |  |  |
| 47 | **یادگیری** | 2018-04-23 A → 2018-04-25 A (+2d) |  | 2.69d → 2.5d |  | 0d → 1.03d |  |
| 49 | یادآوری postgres | 2018-04-23 → 2018-04-25 (+2d) | 2018-04-23 → 2018-04-25 (+2d) |  |  | -0.19d → 0d | constraint start no later than 2018-04-23 → start no earlier than 2018-04-24 |
| 50 | **اجرا** |  |  |  | 0% → 4% |  |  |
| 59 | **اجرای سمت کاربر** |  |  |  | 0% → 6% |  |  |
| 60 | طراحی ui | 2018-05-03 A |  |  | 0% → 20% |  |  |
| 61 | یادگیری بستر مناسب پیاده‌سازی ui |  |  |  | 2% → 10% |  |  |

## Version 6 (saved 2018-04-10, file final.xml)

Note of the change: دوباره آپلود می‌کنم.

Last finish stays 2018-06-28.

Changed:

| ID | Task | Duration | Predecessors | Other |
| --- | --- | --- | --- | --- |
| 23 | یادگیری کار با project libre |  |  | resources معین [88.9%]; پگاه [88.9%] → معین [88.89%]; پگاه [88.89%] |
| 24 | **اجرا** | 10.25h → 13h |  |  |
| 41 | درست کردن داک نیازمندی‌ها و یوزکیس‌ها |  |  | resources پگاه [18.2%] → پگاه [18.18%] |
| 65 | **تست کار دیپلوی‌شده** |  | 64 → none |  |

## Version 7 (saved 2018-04-11, file final.mpp)

Note of the change: قبل چک اوت

Last finish stays 2018-06-28.

Changed:

| ID | Task | Duration | Complete | Predecessors | Other |
| --- | --- | --- | --- | --- | --- |
| 23 | یادگیری کار با project libre |  |  |  | resources معین [88.89%]; پگاه [88.89%] → معین [88.9%]; پگاه [88.9%] |
| 24 | **اجرا** | 13h → 10.25h |  |  |  |
| 33 | **فاز سوم و چهارم** |  | 48% → 51% |  |  |
| 38 | **اجرا** |  | 36% → 38% |  |  |
| 41 | درست کردن داک نیازمندی‌ها و یوزکیس‌ها |  |  |  | resources پگاه [18.18%] → پگاه [18.2%] |
| 43 | **پیاده‌سازی وایرفریم** |  | 46% → 58% |  |  |
| 44 | طراحی |  | 50% → 70% |  |  |
| 65 | **تست کار دیپلوی‌شده** |  |  | none → 64 |  |

## Version 8 (saved 2018-04-13, file final.mpp)

Note of the change: دبلیو بی اس مقادیری عوض شد

Last finish stays 2018-06-28. Complete tasks 25 → 26.

Changed:

| ID | Task | Finish | Complete | Total float |
| --- | --- | --- | --- | --- |
| 1 | **پروژه** |  | 34% → 36% |  |
| 33 | **فاز سوم و چهارم** |  | 51% → 56% |  |
| 34 | **یادگیری** | 2018-03-24 A | 93% → 100% | 9.41d → none |
| 37 | یاد گرفتن سلنیوم | 2018-03-21 A | 60% → 100% | 10.91d → none |
| 38 | **اجرا** |  | 38% → 43% |  |
| 42 | نوشتن سناریوهای تست |  | 1% → 3% |  |
| 43 | **پیاده‌سازی وایرفریم** |  | 58% → 73% |  |
| 44 | طراحی |  | 70% → 75% | 4.83d → 5.12d |
| 45 | پیاده‌سازی |  | 40% → 70% |  |

## Version 9 (saved 2018-04-23, file final.mpp)

Note of the change: hafte ye akhare farvardin- avvale ordibehesht

Last finish 2018-06-28 → 2018-07-01 (+3d).

Changed:

| ID | Task | Start | Finish | Duration | Complete | Total float | Other |
| --- | --- | --- | --- | --- | --- | --- | --- |
| 1 | **پروژه** |  | 2018-06-28 → 2018-07-01 (+3d) | 33.59d → 34.12d | 36% → 42% |  |  |
| 33 | **فاز سوم و چهارم** |  | 2018-04-25 → 2018-05-02 (+7d) | 11.78d → 12.97d | 56% → 59% |  |  |
| 38 | **اجرا** |  | 2018-04-25 → 2018-05-02 (+7d) | 11.78d → 12.97d | 43% → 50% |  |  |
| 41 | درست کردن داک نیازمندی‌ها و یوزکیس‌ها |  | 2018-04-25 → 2018-04-27 (+2d) | 5h → 12h | 75% → 85% | -0.38d → 0d | constraint start no earlier than 2018-04-22 → finish no earlier than 2018-04-27 |
| 42 | نوشتن سناریوهای تست |  | 2018-04-25 → 2018-05-02 (+7d) | 40h → 52.5h | 3% → 15% |  | constraint start no earlier than 2018-04-03 → finish no earlier than 2018-05-02 |
| 43 | **پیاده‌سازی وایرفریم** |  |  |  | 73% → 86% |  |  |
| 44 | طراحی |  |  |  | 75% → 90% | 5.12d → 5.21d |  |
| 45 | پیاده‌سازی |  |  |  | 70% → 80% |  |  |
| 46 | **فاز پنجم(پیاده‌سازی و تست)** |  | 2018-06-28 → 2018-07-01 (+3d) | 15.53d → 16.06d | 7% → 16% |  |  |
| 47 | **یادگیری** |  | 2018-05-03 → 2018-05-06 (+3d) | 2.5d → 3.06d |  | 1.03d → 0d |  |
| 48 | یادگیری جنگو |  | 2018-05-03 → 2018-05-06 (+3d) |  |  | 1.03d → 0d | resources پگاه; درنا; معین → پگاه; معین |
| 49 | یادآوری postgres | 2018-04-25 → 2018-05-02 (+7d) | 2018-04-25 → 2018-05-02 (+7d) |  |  |  |  |
| 50 | **اجرا** |  | 2018-06-28 → 2018-07-01 (+3d) | 15.53d → 16.06d | 4% → 15% |  |  |
| 51 | **اجرای سمت سرور** | 2018-05-03 → 2018-05-07 (+4d) | 2018-06-07 → 2018-06-14 (+7d) | 8.25d → 9.25d |  | 1.03d → 0d |  |
| 52 | **طراحی ER** | 2018-05-03 → 2018-05-07 (+4d) | 2018-05-09 → 2018-05-10 (+1d) |  |  | 1.03d → 0d |  |
| 53 | طراحی اوّلیه | 2018-05-03 → 2018-05-07 (+4d) |  |  |  | 1.03d → 0d |  |
| 54 | بازبینی | 2018-05-09 → 2018-05-10 (+1d) | 2018-05-09 → 2018-05-10 (+1d) |  |  | 1.03d → 0d | resources درنا → معین |
| 55 | **پیاده‌سازی پایگاه داده** | 2018-05-09 → 2018-05-10 (+1d) | 2018-05-11 → 2018-05-16 (+5d) |  |  | 1.03d → 0d |  |
| 56 | پیاده‌سازی اوّلیه | 2018-05-09 → 2018-05-10 (+1d) | 2018-05-10 → 2018-05-15 (+5d) |  |  | 1.03d → 0d |  |
| 57 | نرمال‌سازی روابط | 2018-05-10 → 2018-05-16 (+6d) | 2018-05-11 → 2018-05-16 (+5d) |  |  | 1.03d → 0d |  |
| 58 | پیاده‌سازی کد پایتون | 2018-05-11 → 2018-05-16 (+5d) | 2018-06-07 → 2018-06-14 (+7d) | 50h → 58h |  | 1.03d → 0d |  |
| 59 | **اجرای سمت کاربر** |  | 2018-06-28 → 2018-07-01 (+3d) | 15.53d → 16.06d | 6% → 27% |  |  |
| 60 | طراحی ui |  |  |  | 20% → 50% | 0d → 1.25d |  |
| 61 | یادگیری بستر مناسب پیاده‌سازی ui |  | 2018-05-10 → 2018-05-16 (+6d) |  | 10% → 30% | 4.41d → 4.78d |  |
| 62 | شروع پیاده‌سازی ui | 2018-05-30 A |  |  | 0% → 40% | 0d → 0.53d |  |
| 63 | پیاده‌سازی ui | 2018-06-13 → 2018-06-14 (+1d) | 2018-06-28 → 2018-07-01 (+3d) |  |  |  |  |
| 64 | دیپلوی آزمایشی | 2018-06-13 → 2018-06-14 (+1d) | 2018-06-14 → 2018-06-20 (+6d) |  |  |  |  |
| 65 | **تست کار دیپلوی‌شده** | 2018-06-14 → 2018-06-20 (+6d) | 2018-06-26 → 2018-06-27 (+1d) |  |  |  |  |
| 66 | تست | 2018-06-14 → 2018-06-20 (+6d) | 2018-06-20 → 2018-06-21 (+1d) |  |  |  |  |
| 67 | رفع اشکال | 2018-06-20 → 2018-06-21 (+1d) | 2018-06-26 → 2018-06-27 (+1d) |  |  |  |  |

## Version 10 (saved 2018-04-23, file final.xml)

Note of the change: hafte ye akhare farvardin- avvale ordibehesht

Last finish stays 2018-07-01.

Changed:

| ID | Task | Duration | Predecessors | Other |
| --- | --- | --- | --- | --- |
| 23 | یادگیری کار با project libre |  |  | resources معین [88.9%]; پگاه [88.9%] → معین [88.89%]; پگاه [88.89%] |
| 24 | **اجرا** | 10.25h → 13h |  |  |
| 41 | درست کردن داک نیازمندی‌ها و یوزکیس‌ها |  |  | resources پگاه [18.2%] → پگاه [18.18%] |
| 65 | **تست کار دیپلوی‌شده** |  | 64 → none |  |

## Version 11 (saved 2018-04-30, file final.mpp)

Note of the change: wbs ye dasti khord

Last finish stays 2018-07-01.

Changed:

| ID | Task | Start | Duration | Complete | Total float | Other |
| --- | --- | --- | --- | --- | --- | --- |
| 1 | **پروژه** |  |  | 42% → 50% |  |  |
| 23 | یادگیری کار با project libre |  |  |  |  | resources معین [88.89%]; پگاه [88.89%] → معین [88.9%]; پگاه [88.9%] |
| 24 | **اجرا** |  | 13h → 10.25h |  |  |  |
| 33 | **فاز سوم و چهارم** |  |  | 59% → 74% |  |  |
| 38 | **اجرا** |  |  | 50% → 69% |  |  |
| 40 | نوشتن یوزکیس‌ها |  |  | 85% → 90% |  |  |
| 41 | درست کردن داک نیازمندی‌ها و یوزکیس‌ها |  |  |  |  | resources پگاه [18.18%] → پگاه [18.2%] |
| 42 | نوشتن سناریوهای تست |  |  | 15% → 50% |  |  |
| 46 | **فاز پنجم(پیاده‌سازی و تست)** |  |  | 16% → 22% |  |  |
| 47 | **یادگیری** |  |  | 39% → 49% | 0d → 0.15d |  |
| 48 | یادگیری جنگو |  |  | 40% → 50% | 0d → 0.15d |  |
| 50 | **اجرا** |  |  | 15% → 21% |  |  |
| 51 | **اجرای سمت سرور** | 2018-05-07 A |  | 0% → 2% |  |  |
| 52 | **طراحی ER** | 2018-05-07 A |  | 0% → 13% |  |  |
| 53 | طراحی اوّلیه | 2018-05-07 A |  | 0% → 20% |  |  |
| 59 | **اجرای سمت کاربر** |  |  | 27% → 38% |  |  |
| 62 | شروع پیاده‌سازی ui |  |  | 40% → 80% |  |  |

## Version 12 (saved 2018-05-02, file final.mpp)

Note of the change: neveshtane test ha dar wbs vared shod

Last finish 2018-07-01 → 2018-07-15 (+14d). Complete tasks 26 → 28.

Added:

| ID | Task | Duration | Start | Finish | Constraint | Resources |
| --- | --- | --- | --- | --- | --- | --- |
| 64 | بهبود و دیباگ تست‌ها | 30h | 2018-05-23 | 2018-06-06 | start no earlier than 2018-05-23 | پگاه |

Changed:

| ID | Task | Start | Finish | Duration | Complete | Total float | Predecessors | Other |
| --- | --- | --- | --- | --- | --- | --- | --- | --- |
| 1 | **پروژه** |  | 2018-07-01 → 2018-07-15 (+14d) | 34.12d → 37.34d | 50% → 53% |  |  |  |
| 33 | **فاز سوم و چهارم** |  |  |  | 74% → 92% |  |  |  |
| 38 | **اجرا** |  |  |  | 69% → 91% |  |  |  |
| 42 | نوشتن سناریوهای تست |  |  |  | 50% → 90% |  |  |  |
| 43 | **پیاده‌سازی وایرفریم** |  |  |  | 86% → 96% |  |  |  |
| 44 | طراحی |  | 2018-03-26 A |  | 90% → 100% | 5.21d → none |  |  |
| 45 | پیاده‌سازی |  |  |  | 80% → 90% |  |  |  |
| 46 | **فاز پنجم(پیاده‌سازی و تست)** |  | 2018-07-01 → 2018-07-15 (+14d) | 16.06d → 19.28d | 22% → 24% |  |  |  |
| 49 | یادآوری postgres |  |  |  |  |  |  | resources درنا → معین |
| 50 | **اجرا** |  | 2018-07-01 → 2018-07-15 (+14d) | 16.06d → 19.28d | 21% → 24% |  |  |  |
| 51 | **اجرای سمت سرور** |  | 2018-06-14 → 2018-06-12 (-2d) | 9.25d → 8.25d | 2% → 5% | 0d → 0.47d |  |  |
| 52 | **طراحی ER** |  |  |  | 13% → 40% | 0d → 0.47d |  |  |
| 53 | طراحی اوّلیه |  |  |  | 20% → 60% | 0d → 0.47d |  |  |
| 56 | پیاده‌سازی اوّلیه |  |  |  |  | 0d → 0.47d |  | resources درنا → معین |
| 57 | نرمال‌سازی روابط |  |  |  |  | 0d → 0.47d |  | resources درنا → معین |
| 58 | پیاده‌سازی کد پایتون |  | 2018-06-14 → 2018-06-12 (-2d) | 58h → 50h |  | 0d → 0.47d |  | resources پگاه; معین → معین |
| 59 | **اجرای سمت کاربر** |  | 2018-07-01 → 2018-07-15 (+14d) | 16.06d → 19.28d | 38% → 41% |  |  |  |
| 61 | یادگیری بستر مناسب پیاده‌سازی ui |  |  |  | 30% → 80% | 6.03d → 0d |  |  |
| 62 | شروع پیاده‌سازی ui |  | 2018-06-13 A |  | 80% → 100% | 0.53d → none |  |  |
| 63 | پیاده‌سازی ui | 2018-06-14 → 2018-06-13 (-1d) | 2018-07-01 → 2018-07-15 (+14d) | 30h → 60h |  |  |  | resources پگاه; درنا → درنا |
| 65 | دیپلوی آزمایشی | 2018-06-14 → 2018-06-13 (-1d) | 2018-06-20 → 2018-06-14 (-6d) |  |  |  |  |  |
| 66 | **تست کار دیپلوی‌شده** | 2018-06-20 → 2018-06-14 (-6d) |  | 2d → 2.25d |  |  |  |  |
| 67 | تست | 2018-06-20 → 2018-06-14 (-6d) | 2018-06-21 → 2018-06-20 (-1d) |  |  |  | 65 → 65, 64 | resources معین → پگاه |
| 68 | رفع اشکال | 2018-06-21 → 2018-06-20 (-1d) |  | 10h → 12h |  |  |  | resources معین → معین; پگاه |

## Version 13 (saved 2018-05-21, file final.mpp)

Note of the change: hafte akhare ordibehesht

Last finish 2018-07-15 → 2018-07-11 (-4d). Complete tasks 28 → 30.

Changed:

| ID | Task | Start | Finish | Duration | Complete | Total float | Other |
| --- | --- | --- | --- | --- | --- | --- | --- |
| 1 | **پروژه** |  | 2018-07-15 → 2018-07-11 (-4d) | 37.34d → 36.09d | 53% → 60% |  |  |
| 33 | **فاز سوم و چهارم** |  | 2018-05-02 → 2018-04-27 (-5d) | 12.97d → 12.66d | 92% → 97% |  |  |
| 38 | **اجرا** |  | 2018-05-02 → 2018-04-27 (-5d) | 12.97d → 12.66d | 91% → 96% |  |  |
| 42 | نوشتن سناریوهای تست |  | 2018-05-02 → 2018-04-27 A (-5d) | 52.5h → 49.51h | 90% → 100% | 0d → none | resources درنا → درنا; پگاه |
| 46 | **فاز پنجم(پیاده‌سازی و تست)** |  | 2018-07-15 → 2018-07-11 (-4d) | 19.28d → 18.03d | 24% → 33% |  |  |
| 49 | یادآوری postgres | 2018-05-02 → 2018-04-27 (-5d) | 2018-05-02 → 2018-04-27 (-5d) |  |  |  |  |
| 50 | **اجرا** |  | 2018-07-15 → 2018-07-11 (-4d) | 19.28d → 18.03d | 24% → 34% |  |  |
| 51 | **اجرای سمت سرور** |  |  |  | 5% → 8% | 0.47d → 1.41d |  |
| 52 | **طراحی ER** |  |  |  | 40% → 57% | 0.47d → 0.06d |  |
| 53 | طراحی اوّلیه |  |  |  | 60% → 80% | 0.47d → 0.04d |  |
| 54 | بازبینی | 2018-05-10 A |  |  | 0% → 10% | 0.47d → 0.06d |  |
| 55 | **پیاده‌سازی پایگاه داده** | 2018-05-10 A |  |  | 0% → 7% | 0.47d → 1.41d |  |
| 56 | پیاده‌سازی اوّلیه | 2018-05-10 A |  |  | 0% → 10% | 0.47d → 1.41d | resources معین → درنا; معین |
| 59 | **اجرای سمت کاربر** |  | 2018-07-15 → 2018-07-11 (-4d) | 19.28d → 18.03d | 41% → 60% |  |  |
| 60 | طراحی ui |  | 2018-05-30 A |  | 50% → 100% | 3.12d → none |  |
| 63 | پیاده‌سازی ui | 2018-06-13 A | 2018-07-15 → 2018-07-11 (-4d) | 60h → 50h | 0% → 15% |  | resources درنا → پگاه |
| 66 | **تست کار دیپلوی‌شده** |  |  | 2.25d → 2.53d |  |  |  |
| 67 | تست |  |  |  |  | 0d → 0.28d | resources پگاه → درنا |
| 68 | رفع اشکال | 2018-06-20 → 2018-06-21 (+1d) |  |  |  |  | constraint none → start no earlier than 2018-06-21; resources معین; پگاه → معین; درنا |

## Version 14 (saved 2018-05-21, file final.xml)

Note of the change: Merge branch 'master' into backend

Last finish stays 2018-07-11.

Changed:

| ID | Task | Duration | Other |
| --- | --- | --- | --- |
| 23 | یادگیری کار با project libre |  | resources معین [88.9%]; پگاه [88.9%] → معین [88.89%]; پگاه [88.89%] |
| 24 | **اجرا** | 10.25h → 13h |  |
| 41 | درست کردن داک نیازمندی‌ها و یوزکیس‌ها |  | resources پگاه [18.2%] → پگاه [18.18%] |

## Version 15 (saved 2018-05-28, file final.mpp)

Note of the change: hafte avale khordad

Last finish stays 2018-07-11. Complete tasks 30 → 32.

Changed:

| ID | Task | Finish | Duration | Complete | Total float | Other |
| --- | --- | --- | --- | --- | --- | --- |
| 1 | **پروژه** |  |  | 60% → 64% |  |  |
| 23 | یادگیری کار با project libre |  |  |  |  | resources معین [88.89%]; پگاه [88.89%] → معین [88.9%]; پگاه [88.9%] |
| 24 | **اجرا** |  | 13h → 10.25h |  |  |  |
| 41 | درست کردن داک نیازمندی‌ها و یوزکیس‌ها |  |  |  |  | resources پگاه [18.18%] → پگاه [18.2%] |
| 43 | **پیاده‌سازی وایرفریم** |  |  | 96% → 98% |  |  |
| 45 | پیاده‌سازی |  |  | 90% → 95% |  |  |
| 46 | **فاز پنجم(پیاده‌سازی و تست)** |  |  | 33% → 40% |  |  |
| 47 | **یادگیری** |  |  | 49% → 78% | 0.6d → 4.03d |  |
| 48 | یادگیری جنگو |  |  | 50% → 80% | 0.6d → 4.03d |  |
| 50 | **اجرا** |  |  | 34% → 40% |  |  |
| 51 | **اجرای سمت سرور** |  |  | 8% → 14% | 1.41d → 2.03d |  |
| 52 | **طراحی ER** |  |  | 57% → 72% | 0.06d → 0.38d |  |
| 53 | طراحی اوّلیه | 2018-05-09 A |  | 80% → 100% | 0.04d → none |  |
| 54 | بازبینی |  |  | 10% → 15% | 0.06d → 0.38d |  |
| 55 | **پیاده‌سازی پایگاه داده** |  |  | 7% → 43% | 1.41d → 2.03d |  |
| 56 | پیاده‌سازی اوّلیه |  |  | 10% → 60% | 1.41d → 2.03d |  |
| 59 | **اجرای سمت کاربر** |  |  | 60% → 67% |  |  |
| 61 | یادگیری بستر مناسب پیاده‌سازی ui | 2018-05-16 A |  | 80% → 100% | 0d → none |  |
| 63 | پیاده‌سازی ui |  |  | 15% → 25% |  |  |

## Version 16 (saved 2018-05-28, file final.xml)

Note of the change: hafte avale khordad

Last finish stays 2018-07-11.

Changed:

| ID | Task | Duration | Other |
| --- | --- | --- | --- |
| 23 | یادگیری کار با project libre |  | resources معین [88.9%]; پگاه [88.9%] → معین [88.89%]; پگاه [88.89%] |
| 24 | **اجرا** | 10.25h → 13h |  |
| 41 | درست کردن داک نیازمندی‌ها و یوزکیس‌ها |  | resources پگاه [18.2%] → پگاه [18.18%] |

## Version 17 (saved 2018-06-04, file final.mpp)

Note of the change: hafte dovome khordad

Last finish 2018-07-11 → 2018-07-10 (-1d). Complete tasks 32 → 34.

Changed:

| ID | Task | Start | Finish | Duration | Complete | Total float | Predecessors | Other |
| --- | --- | --- | --- | --- | --- | --- | --- | --- |
| 1 | **پروژه** |  | 2018-07-11 → 2018-07-10 (-1d) | 36.09d → 35.84d | 64% → 71% |  |  |  |
| 23 | یادگیری کار با project libre |  |  |  |  |  |  | resources معین [88.89%]; پگاه [88.89%] → معین [88.9%]; پگاه [88.9%] |
| 24 | **اجرا** |  |  | 13h → 10.25h |  |  |  |  |
| 41 | درست کردن داک نیازمندی‌ها و یوزکیس‌ها |  |  |  |  |  |  | resources پگاه [18.18%] → پگاه [18.2%] |
| 46 | **فاز پنجم(پیاده‌سازی و تست)** |  | 2018-07-11 → 2018-07-10 (-1d) | 18.03d → 17.78d | 40% → 50% |  |  |  |
| 47 | **یادگیری** |  |  |  | 78% → 80% |  |  |  |
| 49 | یادآوری postgres | 2018-04-27 A | 2018-04-27 A |  | 0% → 100% | 0d → none |  |  |
| 50 | **اجرا** |  | 2018-07-11 → 2018-06-28 (-13d) | 18.03d → 15.53d | 40% → 52% |  |  |  |
| 51 | **اجرای سمت سرور** |  |  |  | 14% → 19% |  |  |  |
| 52 | **طراحی ER** |  |  |  | 72% → 83% | 0.38d → 0d |  |  |
| 54 | بازبینی |  |  |  | 15% → 50% | 0.38d → 0d |  |  |
| 55 | **پیاده‌سازی پایگاه داده** |  |  |  | 43% → 71% |  |  |  |
| 56 | پیاده‌سازی اوّلیه |  | 2018-05-15 A |  | 60% → 100% | 2.03d → none |  |  |
| 59 | **اجرای سمت کاربر** |  | 2018-07-11 → 2018-06-28 (-13d) | 18.03d → 15.53d | 67% → 82% |  |  |  |
| 63 | پیاده‌سازی ui |  | 2018-07-11 → 2018-06-28 (-13d) | 50h → 30h | 25% → 42% |  |  |  |
| 64 | بهبود و دیباگ تست‌ها | 2018-05-23 A |  |  | 0% → 40% | 2.62d → 5.34d |  |  |
| 66 | **تست کار دیپلوی‌شده** | 2018-06-14 → 2018-06-28 (+14d) | 2018-06-27 → 2018-07-10 (+13d) | 2.53d → 2.25d |  |  | none → 59 |  |
| 67 | تست | 2018-06-14 → 2018-06-28 (+14d) | 2018-06-20 → 2018-07-04 (+14d) |  |  | 0.28d → 0d |  |  |
| 68 | رفع اشکال | 2018-06-21 → 2018-07-04 (+13d) | 2018-06-27 → 2018-07-10 (+13d) |  |  |  |  |  |

## Version 18 (saved 2018-06-04, file final.xml)

Note of the change: hafte dovome khordad

Last finish stays 2018-07-10.

Changed:

| ID | Task | Duration | Other |
| --- | --- | --- | --- |
| 23 | یادگیری کار با project libre |  | resources معین [88.9%]; پگاه [88.9%] → معین [88.89%]; پگاه [88.89%] |
| 24 | **اجرا** | 10.25h → 13h |  |
| 41 | درست کردن داک نیازمندی‌ها و یوزکیس‌ها |  | resources پگاه [18.2%] → پگاه [18.18%] |

## Version 19 (saved 2018-06-10, file final.mpp)

Note of the change: hafte sevome khordad

Last finish stays 2018-07-10.

Changed:

| ID | Task | Start | Duration | Complete | Total float | Other |
| --- | --- | --- | --- | --- | --- | --- |
| 1 | **پروژه** |  |  | 71% → 75% |  |  |
| 23 | یادگیری کار با project libre |  |  |  |  | resources معین [88.89%]; پگاه [88.89%] → معین [88.9%]; پگاه [88.9%] |
| 24 | **اجرا** |  | 13h → 10.25h |  |  |  |
| 41 | درست کردن داک نیازمندی‌ها و یوزکیس‌ها |  |  |  |  | resources پگاه [18.18%] → پگاه [18.2%] |
| 46 | **فاز پنجم(پیاده‌سازی و تست)** |  |  | 50% → 57% |  |  |
| 47 | **یادگیری** |  |  | 80% → 90% | 4.03d → 2.94d |  |
| 48 | یادگیری جنگو |  |  | 80% → 90% | 4.03d → 2.94d |  |
| 50 | **اجرا** |  |  | 52% → 58% |  |  |
| 51 | **اجرای سمت سرور** |  |  | 19% → 30% | 2.03d → 2.34d |  |
| 58 | پیاده‌سازی کد پایتون | 2018-05-16 A |  | 0% → 15% | 2.03d → 2.34d |  |
| 59 | **اجرای سمت کاربر** |  |  | 82% → 84% |  |  |
| 63 | پیاده‌سازی ui |  |  | 42% → 50% |  |  |
| 64 | بهبود و دیباگ تست‌ها |  |  | 40% → 50% |  |  |

## Version 20 (saved 2018-06-10, file final.xml)

Note of the change: hafte sevome khordad

Last finish stays 2018-07-10.

Changed:

| ID | Task | Duration | Other |
| --- | --- | --- | --- |
| 23 | یادگیری کار با project libre |  | resources معین [88.9%]; پگاه [88.9%] → معین [88.89%]; پگاه [88.89%] |
| 24 | **اجرا** | 10.25h → 13h |  |
| 41 | درست کردن داک نیازمندی‌ها و یوزکیس‌ها |  | resources پگاه [18.2%] → پگاه [18.18%] |

## Version 21 (saved 2018-06-17, file final.mpp)

Note of the change: hafte akhare khordad

Last finish stays 2018-07-10. Complete tasks 34 → 37.

Changed:

| ID | Task | Finish | Duration | Complete | Total float | Other |
| --- | --- | --- | --- | --- | --- | --- |
| 1 | **پروژه** |  |  | 75% → 80% |  |  |
| 23 | یادگیری کار با project libre |  |  |  |  | resources معین [88.89%]; پگاه [88.89%] → معین [88.9%]; پگاه [88.9%] |
| 24 | **اجرا** |  | 13h → 10.25h |  |  |  |
| 33 | **فاز سوم و چهارم** | 2018-04-27 A |  | 97% → 100% | 0d → none |  |
| 38 | **اجرا** | 2018-04-27 A |  | 96% → 100% | 0d → none |  |
| 40 | نوشتن یوزکیس‌ها | 2018-03-31 A |  | 90% → 100% | 6.76d → none |  |
| 41 | درست کردن داک نیازمندی‌ها و یوزکیس‌ها | 2018-04-27 A |  | 85% → 100% | 0d → none | resources پگاه [18.18%] → پگاه [18.2%] |
| 43 | **پیاده‌سازی وایرفریم** | 2018-04-11 A |  | 98% → 100% | 2.75d → none |  |
| 45 | پیاده‌سازی | 2018-04-11 A |  | 95% → 100% | 2.75d → none |  |
| 46 | **فاز پنجم(پیاده‌سازی و تست)** |  |  | 57% → 65% |  |  |
| 50 | **اجرا** |  |  | 58% → 68% |  |  |
| 51 | **اجرای سمت سرور** |  |  | 30% → 42% | 2.34d → 2.72d |  |
| 58 | پیاده‌سازی کد پایتون |  |  | 15% → 30% | 2.34d → 2.72d |  |
| 59 | **اجرای سمت کاربر** |  |  | 84% → 87% |  |  |
| 63 | پیاده‌سازی ui |  |  | 50% → 60% |  |  |
| 64 | بهبود و دیباگ تست‌ها |  |  | 50% → 80% |  |  |

## Version 22 (saved 2018-06-17, file final.xml)

Note of the change: hafte charome khordad

Last finish stays 2018-07-10.

Changed:

| ID | Task | Duration | Other |
| --- | --- | --- | --- |
| 23 | یادگیری کار با project libre |  | resources معین [88.9%]; پگاه [88.9%] → معین [88.89%]; پگاه [88.89%] |
| 24 | **اجرا** | 10.25h → 13h |  |
| 41 | درست کردن داک نیازمندی‌ها و یوزکیس‌ها |  | resources پگاه [18.2%] → پگاه [18.18%] |

## Version 23 (saved 2018-07-01, file final.mpp)

Note of the change: hafte avale tir

Last finish 2018-07-10 → 2018-08-16 (+37d).

Changed:

| ID | Task | Start | Finish | Duration | Complete | Total float | Other |
| --- | --- | --- | --- | --- | --- | --- | --- |
| 1 | **پروژه** |  | 2018-07-10 → 2018-08-16 (+37d) | 35.84d → 45d | 80% → 68% |  |  |
| 23 | یادگیری کار با project libre |  |  |  |  |  | resources معین [88.89%]; پگاه [88.89%] → معین [88.9%]; پگاه [88.9%] |
| 24 | **اجرا** |  |  | 13h → 10.25h |  |  |  |
| 41 | درست کردن داک نیازمندی‌ها و یوزکیس‌ها |  |  |  |  |  | resources پگاه [18.18%] → پگاه [18.2%] |
| 46 | **فاز پنجم(پیاده‌سازی و تست)** |  | 2018-07-10 → 2018-08-16 (+37d) | 17.78d → 26.94d | 65% → 50% |  |  |
| 50 | **اجرا** |  | 2018-06-28 → 2018-08-05 (+38d) | 15.53d → 24.19d | 68% → 50% |  |  |
| 51 | **اجرای سمت سرور** |  | 2018-06-12 → 2018-07-06 (+24d) | 8.25d → 14.5d | 42% → 25% | 2.72d → 0d |  |
| 55 | **پیاده‌سازی پایگاه داده** |  |  |  | 71% → 89% |  |  |
| 57 | نرمال‌سازی روابط | 2018-05-16 A |  |  | 0% → 60% |  |  |
| 58 | پیاده‌سازی کد پایتون |  | 2018-06-12 → 2018-07-06 (+24d) | 50h → 100h | 30% → 15% | 2.72d → 0d |  |
| 59 | **اجرای سمت کاربر** |  | 2018-06-28 → 2018-07-19 (+21d) | 15.53d → 20.31d | 87% → 79% |  |  |
| 63 | پیاده‌سازی ui |  | 2018-06-28 → 2018-07-19 (+21d) | 30h → 40h | 60% → 45% |  |  |
| 64 | بهبود و دیباگ تست‌ها |  | 2018-06-06 → 2018-08-05 (+60d) | 30h → 50h | 80% → 60% | 5.34d → 0d | constraint start no earlier than 2018-05-23 → start no earlier than 2018-07-13 |
| 65 | دیپلوی آزمایشی | 2018-06-13 → 2018-07-14 (+31d) | 2018-06-14 → 2018-07-19 (+35d) | 6h → 10h |  | 3d → 3.75d | constraint none → start no earlier than 2018-07-14 |
| 66 | **تست کار دیپلوی‌شده** | 2018-06-28 → 2018-08-06 (+39d) | 2018-07-10 → 2018-08-16 (+37d) | 2.25d → 2.75d |  |  |  |
| 67 | تست | 2018-06-28 → 2018-08-06 (+39d) | 2018-07-04 → 2018-08-09 (+36d) | 6h → 10h |  |  |  |
| 68 | رفع اشکال | 2018-07-04 → 2018-08-09 (+36d) | 2018-07-10 → 2018-08-16 (+37d) |  |  |  |  |

## Version 24 (saved 2018-07-01, file final.xml)

Note of the change: hafte avale tir

Last finish stays 2018-08-16.

Changed:

| ID | Task | Duration | Other |
| --- | --- | --- | --- |
| 23 | یادگیری کار با project libre |  | resources معین [88.9%]; پگاه [88.9%] → معین [88.89%]; پگاه [88.89%] |
| 24 | **اجرا** | 10.25h → 13h |  |
| 41 | درست کردن داک نیازمندی‌ها و یوزکیس‌ها |  | resources پگاه [18.2%] → پگاه [18.18%] |

## Version 25 (saved 2018-08-03, file final.mpp)

Note of the change: Hafte dovome mordad

Last finish 2018-08-16 → 2018-08-23 (+7d). Complete tasks 37 → 39.

Changed:

| ID | Task | Start | Finish | Duration | Complete | Total float | Other |
| --- | --- | --- | --- | --- | --- | --- | --- |
| 1 | **پروژه** |  | 2018-08-16 → 2018-08-23 (+7d) | 45d → 46.62d | 68% → 77% |  |  |
| 23 | یادگیری کار با project libre |  |  |  |  |  | resources معین [88.89%]; پگاه [88.89%] → معین [88.9%]; پگاه [88.9%] |
| 24 | **اجرا** |  |  | 13h → 10.25h |  |  |  |
| 41 | درست کردن داک نیازمندی‌ها و یوزکیس‌ها |  |  |  |  |  | resources پگاه [18.18%] → پگاه [18.2%] |
| 46 | **فاز پنجم(پیاده‌سازی و تست)** |  | 2018-08-16 → 2018-08-23 (+7d) | 26.94d → 28.56d | 50% → 59% |  |  |
| 50 | **اجرا** |  | 2018-08-05 → 2018-08-12 (+7d) | 24.19d → 25.81d | 50% → 63% |  |  |
| 51 | **اجرای سمت سرور** |  | 2018-07-06 → 2018-06-28 (-8d) | 14.5d → 12.44d | 25% → 40% |  |  |
| 55 | **پیاده‌سازی پایگاه داده** |  | 2018-05-16 A |  | 89% → 100% | 1.88d → none |  |
| 57 | نرمال‌سازی روابط |  | 2018-05-16 A |  | 60% → 100% | 1.88d → none |  |
| 58 | پیاده‌سازی کد پایتون |  | 2018-07-06 → 2018-06-28 (-8d) | 100h → 57.5h | 15% → 26% |  | resources معین → معین; پگاه |
| 59 | **اجرای سمت کاربر** |  | 2018-07-19 → 2018-06-13 A (-36d) | 20.31d → 11.78d | 79% → 100% | 0d → none |  |
| 63 | پیاده‌سازی ui |  | 2018-07-19 → 2018-06-13 A (-36d) | 40h → 0h | 45% → 100% | 0d → none |  |
| 64 | بهبود و دیباگ تست‌ها |  | 2018-08-05 → 2018-08-12 (+7d) |  |  |  | constraint start no earlier than 2018-07-13 → start no earlier than 2018-07-20 |
| 66 | **تست کار دیپلوی‌شده** | 2018-08-06 → 2018-08-13 (+7d) | 2018-08-16 → 2018-08-23 (+7d) |  |  |  |  |
| 67 | تست | 2018-08-06 → 2018-08-13 (+7d) | 2018-08-09 → 2018-08-16 (+7d) |  |  |  |  |
| 68 | رفع اشکال | 2018-08-09 → 2018-08-16 (+7d) | 2018-08-16 → 2018-08-23 (+7d) |  |  |  | resources معین; درنا → معین; پگاه |

## Version 26 (saved 2018-08-03, file final.xml)

Note of the change: Hafte dovome mordad

Last finish stays 2018-08-23.

Changed:

| ID | Task | Duration | Other |
| --- | --- | --- | --- |
| 23 | یادگیری کار با project libre |  | resources معین [88.9%]; پگاه [88.9%] → معین [88.89%]; پگاه [88.89%] |
| 24 | **اجرا** | 10.25h → 13h |  |
| 41 | درست کردن داک نیازمندی‌ها و یوزکیس‌ها |  | resources پگاه [18.2%] → پگاه [18.18%] |

## Version 27 (saved 2018-08-12, file final.mpp)

Note of the change: Hafte sevome mordad

Last finish stays 2018-08-23.

Changed:

| ID | Task | Duration | Complete | Total float | Other |
| --- | --- | --- | --- | --- | --- |
| 1 | **پروژه** |  | 77% → 81% |  |  |
| 23 | یادگیری کار با project libre |  |  |  | resources معین [88.89%]; پگاه [88.89%] → معین [88.9%]; پگاه [88.9%] |
| 24 | **اجرا** | 13h → 10.25h |  |  |  |
| 41 | درست کردن داک نیازمندی‌ها و یوزکیس‌ها |  |  |  | resources پگاه [18.18%] → پگاه [18.2%] |
| 46 | **فاز پنجم(پیاده‌سازی و تست)** |  | 59% → 68% |  |  |
| 47 | **یادگیری** |  | 90% → 95% | 7.12d → 8.84d |  |
| 48 | یادگیری جنگو |  | 90% → 95% | 7.12d → 8.84d |  |
| 50 | **اجرا** |  | 63% → 72% |  |  |
| 51 | **اجرای سمت سرور** |  | 40% → 59% |  |  |
| 58 | پیاده‌سازی کد پایتون |  | 26% → 50% |  |  |
| 64 | بهبود و دیباگ تست‌ها |  | 60% → 70% |  |  |

## Version 28 (saved 2018-08-12, file final.xml)

Note of the change: Hafte sevome mordad

Last finish stays 2018-08-23.

Changed:

| ID | Task | Duration | Other |
| --- | --- | --- | --- |
| 23 | یادگیری کار با project libre |  | resources معین [88.9%]; پگاه [88.9%] → معین [88.89%]; پگاه [88.89%] |
| 24 | **اجرا** | 10.25h → 13h |  |
| 41 | درست کردن داک نیازمندی‌ها و یوزکیس‌ها |  | resources پگاه [18.2%] → پگاه [18.18%] |

## Version 29 (saved 2018-08-19, file final.mpp)

Note of the change: Hafte chaharome mordad

Last finish stays 2018-08-23.

Changed:

| ID | Task | Duration | Complete | Other |
| --- | --- | --- | --- | --- |
| 1 | **پروژه** |  | 81% → 86% |  |
| 23 | یادگیری کار با project libre |  |  | resources معین [88.89%]; پگاه [88.89%] → معین [88.9%]; پگاه [88.9%] |
| 24 | **اجرا** | 13h → 10.25h |  |  |
| 41 | درست کردن داک نیازمندی‌ها و یوزکیس‌ها |  |  | resources پگاه [18.18%] → پگاه [18.2%] |
| 46 | **فاز پنجم(پیاده‌سازی و تست)** |  | 68% → 75% |  |
| 50 | **اجرا** |  | 72% → 81% |  |
| 51 | **اجرای سمت سرور** |  | 59% → 76% |  |
| 52 | **طراحی ER** |  | 83% → 97% |  |
| 54 | بازبینی |  | 50% → 90% |  |
| 58 | پیاده‌سازی کد پایتون |  | 50% → 70% |  |
| 64 | بهبود و دیباگ تست‌ها |  | 70% → 80% |  |

## Version 30 (saved 2018-08-19, file final.xml)

Note of the change: Hafte chaharome mordad

Last finish stays 2018-08-23.

Changed:

| ID | Task | Duration | Other |
| --- | --- | --- | --- |
| 23 | یادگیری کار با project libre |  | resources معین [88.9%]; پگاه [88.9%] → معین [88.89%]; پگاه [88.89%] |
| 24 | **اجرا** | 10.25h → 13h |  |
| 41 | درست کردن داک نیازمندی‌ها و یوزکیس‌ها |  | resources پگاه [18.2%] → پگاه [18.18%] |

## Version 31 (saved 2018-08-26, file final.mpp)

Note of the change: Hafte avale shahrivar

Last finish stays 2018-08-23. Complete tasks 39 → 41.

Changed:

| ID | Task | Finish | Duration | Complete | Total float | Other |
| --- | --- | --- | --- | --- | --- | --- |
| 1 | **پروژه** |  |  | 86% → 90% |  |  |
| 23 | یادگیری کار با project libre |  |  |  |  | resources معین [88.89%]; پگاه [88.89%] → معین [88.9%]; پگاه [88.9%] |
| 24 | **اجرا** |  | 13h → 10.25h |  |  |  |
| 41 | درست کردن داک نیازمندی‌ها و یوزکیس‌ها |  |  |  |  | resources پگاه [18.18%] → پگاه [18.2%] |
| 46 | **فاز پنجم(پیاده‌سازی و تست)** |  |  | 75% → 82% |  |  |
| 47 | **یادگیری** | 2018-05-06 A |  | 95% → 100% | 10.28d → none |  |
| 48 | یادگیری جنگو | 2018-05-06 A |  | 95% → 100% | 10.28d → none |  |
| 50 | **اجرا** |  |  | 81% → 90% |  |  |
| 51 | **اجرای سمت سرور** |  |  | 76% → 92% |  |  |
| 52 | **طراحی ER** | 2018-05-10 A |  | 97% → 100% | 0d → none |  |
| 54 | بازبینی | 2018-05-10 A |  | 90% → 100% | 0d → none |  |
| 58 | پیاده‌سازی کد پایتون |  |  | 70% → 90% |  |  |
| 64 | بهبود و دیباگ تست‌ها |  |  | 80% → 90% |  |  |

## Version 32 (saved 2018-08-26, file final.xml)

Note of the change: Hafte avale shahrivar

Last finish stays 2018-08-23.

Changed:

| ID | Task | Duration | Other |
| --- | --- | --- | --- |
| 23 | یادگیری کار با project libre |  | resources معین [88.9%]; پگاه [88.9%] → معین [88.89%]; پگاه [88.89%] |
| 24 | **اجرا** | 10.25h → 13h |  |
| 41 | درست کردن داک نیازمندی‌ها و یوزکیس‌ها |  | resources پگاه [18.2%] → پگاه [18.18%] |
